# lab3_manual_minday_over_allocated

How a schedule from MS Project changed from version to version. A marks actual dates.

## Version 1 (saved 2022-11-09, file lab3_manual_minday_over_allocated.mpp)

Note of the change: init repo

| ID | WBS | Task | Duration | Start | Finish | Predecessors | Total float | Constraint |
| --- | --- | --- | --- | --- | --- | --- | --- | --- |
| 1 | 1 | **Total** | 18d | 2022-10-26 | 2022-11-18 |  | 0d |  |
| 2 | 1.1 | **Implementations** | 13d | 2022-10-26 | 2022-11-11 |  | 0d |  |
| 3 |  | Build users DB | 16h | 2022-10-26 | 2022-10-27 |  |  |  |
| 4 | 1.1.2 | **Student** | 2.5d | 2022-10-26 | 2022-10-28 |  | 0d |  |
| 5 |  | Build students DB | 20h | 2022-10-26 | 2022-10-28 | 3 |  |  |
| 6 |  | Build subjects DB | 10h | 2022-10-26 | 2022-10-27 |  |  |  |
| 7 |  | Allow student to choose subjects of interest | 16h | 2022-10-26 | 2022-10-27 | 5, 6 |  |  |
| 8 |  | Allow student to add detailed information (ID, school, grade, etc.) | 16h | 2022-10-26 | 2022-10-27 | 5, 6 |  |  |
| 9 | 1.1.3 | **Teacher** | 2.5d | 2022-10-26 | 2022-10-28 |  | 0d |  |
| 10 |  | Build teachers DB | 20h | 2022-10-26 | 2022-10-28 | 3 |  |  |
| 11 |  | Allow teacher to add basic personal information | 8h | 2022-10-26 | 2022-10-26 | 10 |  |  |
| 12 |  | Allow teacher to add expertise | 8h | 2022-10-26 | 2022-10-26 | 6, 10 |  |  |
| 13 |  | Allow teacher to set a base pricings (daily, weekly, etc.) | 4h | 2022-10-26 | 2022-10-26 | 11, 12 |  |  |
| 14 |  | Allow teacher to submit the profile for reviewing by admins | 8h | 2022-10-26 | 2022-10-26 | 11, 12, 13 |  |  |
| 15 |  | Show teacher's reviews in their profile | 10h | 2022-10-26 | 2022-10-27 | 20 |  |  |
| 16 |  | Show feedbacks from students privately | 12h | 2022-10-26 | 2022-10-27 | 21 |  |  |
| 17 | 1.1.4 | **Teacher - Student interactions** | 9.5d | 2022-10-26 | 2022-11-08 |  | 0d |  |
| 18 |  | Recommend suitable teachers to students | 32h | 2022-10-26 | 2022-10-31 | 10, 5, 6 |  |  |
| 19 |  | Search for teachers based on subject, teachers’ location, suitable teaching date, level (fundamental, advanced, …) | 28h | 2022-10-26 | 2022-11-08 | 5, 6, 10 |  |  |
| 20 |  | Can leave ratings & reviews after learning | 16h | 2022-10-26 | 2022-10-27 | 5, 10 |  |  |
| 21 |  | Can leave feedback to teachers (anonimity is optional) | 16h | 2022-10-26 | 2022-10-27 | 5, 10 |  |  |
| 22 | 1.1.5 | **Communication system** | 13d | 2022-10-26 | 2022-11-11 |  |  |  |
| 23 |  | Chatbox | 80h | 2022-10-26 | 2022-11-08 | 5, 10 |  |  |
| 24 |  | Voice/Video call | 80h | 2022-10-26 | 2022-11-08 | 5, 10 |  |  |
| 25 |  | Phone number (basic contact method) | 8h | 2022-10-26 | 2022-10-26 | 5, 10 |  |  |
| 26 |  | Integrate with payment methods | 24h | 2022-10-26 | 2022-10-28 |  |  |  |
| 27 | 1.1.6 | **Customer service** | 2d | 2022-10-26 | 2022-10-27 |  | 0d |  |
| 28 |  | Build customer service DB | 16h | 2022-10-26 | 2022-10-27 | 3 |  |  |
| 29 |  | Answer support message | 16h | 2022-10-26 | 2022-10-27 | 23, 28 |  |  |
| 30 |  | Answer hotline calls (aka. Urgent contact) | 8h | 2022-10-26 | 2022-10-26 | 28 |  |  |
| 31 | 1.1.7 | **Admin** | 8.5d | 2022-10-26 | 2022-11-07 |  | 0d |  |
| 32 |  | Allow tracking of chat messages | 12h | 2022-10-26 | 2022-10-27 | 23 |  |  |
| 33 |  | Allow tracking of reviews | 24h | 2022-10-28 | 2022-11-07 | 20 | 4.5d | start no earlier than 2022-10-26 |
| 34 |  | Allow tracking of feedbacks | 24h | 2022-10-28 | 2022-11-01 | 21 | 8d | start no earlier than 2022-10-26 |
| 35 |  | Allow manual user banning | 12h | 2022-10-28 | 2022-10-31 | 3 | 9.5d | start no earlier than 2022-10-26 |
| 36 |  | Allow to approve/deny teachers' profiles | 6h | 2022-10-27 | 2022-10-27 | 14 | 11.25d | start no earlier than 2022-10-26 |
| 37 | 1.2 | **Testing** | 5d | 2022-10-26 | 2022-11-01 |  |  |  |
| 38 |  | User testing | 24h | 2022-11-14 | 2022-11-16 | 2 | 2d | start no earlier than 2022-10-26 |
| 39 |  | Smoke testing | 8h | 2022-11-14 | 2022-11-14 | 2 | 4d | start no earlier than 2022-10-26 |
| 40 |  | System testing | 40h | 2022-11-14 | 2022-11-18 | 2 | 0d | start no earlier than 2022-10-26 |
| 41 |  | Stress test | 24h | 2022-11-14 | 2022-11-16 | 2 | 2d | start no earlier than 2022-10-26 |

## Version 2 (data date 2022-11-13, saved 2022-11-13, file lab3_auto_maxday_non-overallocated.mpp)

Note of the change: init repo

Last finish 2022-11-18 → 2022-12-14 (+26d). Complete tasks 0 → 11.

Changed:

| ID | Task | Start | Finish | Duration | Complete | Total float | Predecessors | Other |
| --- | --- | --- | --- | --- | --- | --- | --- | --- |
| 1 | **Total** | 2022-10-26 A | 2022-11-18 → 2022-12-14 (+26d) | 18d → 35.5d | 0% → 39% |  |  | baseline start none → 2022-10-26; baseline finish none → 2022-12-09 |
| 2 | **Implementations** | 2022-10-26 A | 2022-11-11 → 2022-12-07 (+26d) | 13d → 30.5d | 0% → 46% |  |  | baseline start none → 2022-10-26; baseline finish none → 2022-12-02 |
| 3 | Build users DB | 2022-10-26 A | 2022-10-27 → 2022-11-01 A (+5d) | 16h → 34h | 0% → 100% |  |  | baseline start none → 2022-10-26; baseline finish none → 2022-10-27 |
| 4 | **Student** | 2022-10-26 → 2022-10-28 A (+2d) | 2022-10-28 → 2022-11-21 (+24d) | 2.5d → 16.75d | 0% → 48% | 0d → 11.75d |  | baseline start none → 2022-10-28; baseline finish none → 2022-11-17 |
| 5 | Build students DB | 2022-10-26 → 2022-11-01 A (+6d) | 2022-10-28 → 2022-11-03 A (+6d) |  | 0% → 100% |  |  | baseline start none → 2022-10-28; baseline finish none → 2022-11-01 |
| 6 | Build subjects DB | 2022-10-26 → 2022-10-28 A (+2d) | 2022-10-27 → 2022-10-31 A (+4d) |  | 0% → 100% |  |  | baseline start none → 2022-10-28; baseline finish none → 2022-10-31 |
| 7 | Allow student to choose subjects of interest | 2022-10-26 → 2022-11-14 (+19d) | 2022-10-27 → 2022-11-15 (+19d) |  |  | none → 15.5d |  | baseline start none → 2022-11-10; baseline finish none → 2022-11-14 |
| 8 | Allow student to add detailed information (ID, school, grade, etc.) | 2022-10-26 → 2022-11-17 (+22d) | 2022-10-27 → 2022-11-21 (+25d) |  |  | none → 11.75d |  | baseline start none → 2022-11-15; baseline finish none → 2022-11-17 |
| 9 | **Teacher** | 2022-10-26 → 2022-10-28 A (+2d) | 2022-10-28 → 2022-12-01 (+34d) | 2.5d → 24.25d | 0% → 63% | 0d → 4.25d |  | baseline start none → 2022-10-28; baseline finish none → 2022-12-01 |
| 10 | Build teachers DB | 2022-10-26 → 2022-11-01 A (+6d) | 2022-10-28 → 2022-11-03 A (+6d) |  | 0% → 100% |  |  | baseline start none → 2022-10-28; baseline finish none → 2022-11-01 |
| 11 | Allow teacher to add basic personal information | 2022-10-26 → 2022-11-03 A (+8d) | 2022-10-26 → 2022-11-04 A (+9d) |  | 0% → 100% |  |  | baseline start none → 2022-11-01; baseline finish none → 2022-11-02 |
| 12 | Allow teacher to add expertise | 2022-10-26 → 2022-10-28 A (+2d) | 2022-10-26 → 2022-10-28 (+2d) |  | 0% → 50% |  |  | baseline start none → 2022-10-28; baseline finish none → 2022-10-28 |
| 13 | Allow teacher to set a base pricings (daily, weekly, etc.) | 2022-10-26 → 2022-11-09 A (+14d) | 2022-10-26 → 2022-11-10 A (+15d) |  | 0% → 100% |  |  | baseline start none → 2022-11-07; baseline finish none → 2022-11-07 |
| 14 | Allow teacher to submit the profile for reviewing by admins | 2022-10-26 → 2022-11-10 A (+15d) | 2022-10-26 → 2022-11-11 A (+16d) |  | 0% → 100% |  |  | baseline start none → 2022-11-08; baseline finish none → 2022-11-08 |
| 15 | Show teacher's reviews in their profile | 2022-10-26 → 2022-11-30 (+35d) | 2022-10-27 → 2022-12-01 (+35d) |  |  | none → 4.25d |  | baseline start none → 2022-11-25; baseline finish none → 2022-11-28 |
| 16 | Show feedbacks from students privately | 2022-10-26 → 2022-11-18 (+23d) | 2022-10-27 → 2022-11-28 (+32d) |  |  | none → 7.25d |  | baseline start none → 2022-11-29; baseline finish none → 2022-12-01 |
| 17 | **Teacher - Student interactions** | 2022-10-26 → 2022-11-03 A (+8d) | 2022-11-08 → 2022-11-24 (+16d) | 9.5d → 15.25d | 0% → 24% | 0d → 8.5d |  | baseline start none → 2022-11-01; baseline finish none → 2022-11-24 |
| 18 | Recommend suitable teachers to students | 2022-10-26 → 2022-11-21 (+26d) | 2022-10-31 → 2022-11-24 (+24d) |  |  | none → 8.5d |  | baseline start none → 2022-11-18; baseline finish none → 2022-11-24 |
| 19 | Search for teachers based on subject, teachers’ location, suitable teaching date, level (fundamental, advanced, …) | 2022-10-26 → 2022-11-03 A (+8d) | 2022-11-08 → 2022-11-10 (+2d) |  | 0% → 50% | none → 19.25d |  | baseline start none → 2022-11-01; baseline finish none → 2022-11-14 |
| 20 | Can leave ratings & reviews after learning | 2022-10-26 → 2022-11-08 A (+13d) | 2022-10-27 → 2022-11-15 (+19d) |  | 0% → 50% | none → 0d |  | baseline start none → 2022-11-09; baseline finish none → 2022-11-11 |
| 21 | Can leave feedback to teachers (anonimity is optional) | 2022-10-26 → 2022-11-14 (+19d) | 2022-10-27 → 2022-11-16 (+20d) |  |  | none → 7.5d |  | baseline start none → 2022-11-04; baseline finish none → 2022-11-14 |
| 22 | **Communication system** | 2022-10-26 → 2022-11-03 A (+8d) | 2022-11-11 → 2022-11-28 (+17d) | 13d → 17d | 0% → 52% | none → 6.75d |  | baseline start none → 2022-11-01; baseline finish none → 2022-11-18 |
| 23 | Chatbox | 2022-10-26 → 2022-11-04 A (+9d) | 2022-11-08 → 2022-11-28 (+20d) |  | 0% → 33% | none → 2.25d |  | baseline start none → 2022-11-04; baseline finish none → 2022-11-18 |
| 24 | Voice/Video call | 2022-10-26 → 2022-11-03 A (+8d) | 2022-11-08 → 2022-11-17 (+9d) |  | 0% → 63% | none → 13.75d |  | baseline start none → 2022-11-01; baseline finish none → 2022-11-15 |
| 25 | Phone number (basic contact method) | 2022-10-26 → 2022-11-17 (+22d) | 2022-10-26 → 2022-11-18 (+23d) |  |  | none → 13.25d |  | baseline start none → 2022-11-15; baseline finish none → 2022-11-15 |
| 26 | Integrate with payment methods | 2022-10-26 → 2022-11-03 A (+8d) | 2022-10-28 → 2022-11-08 A (+11d) |  | 0% → 100% |  | none → 5, 10 | baseline start none → 2022-11-01; baseline finish none → 2022-11-04 |
| 27 | **Customer service** | 2022-10-26 → 2022-11-07 A (+12d) | 2022-10-27 → 2022-12-05 (+39d) | 2d → 20.25d | 0% → 60% | 0d → 2.25d |  | baseline start none → 2022-11-02; baseline finish none → 2022-11-22 |
| 28 | Build customer service DB | 2022-10-26 → 2022-11-07 A (+12d) | 2022-10-27 → 2022-11-08 A (+12d) |  | 0% → 100% |  |  | baseline start none → 2022-11-02; baseline finish none → 2022-11-04 |
| 29 | Answer support message | 2022-10-26 → 2022-11-28 (+33d) | 2022-10-27 → 2022-12-05 (+39d) |  |  | none → 2.25d |  | baseline start none → 2022-11-18; baseline finish none → 2022-11-22 |
| 30 | Answer hotline calls (aka. Urgent contact) | 2022-10-26 → 2022-11-09 A (+14d) | 2022-10-26 → 2022-11-09 A (+14d) |  | 0% → 100% |  |  | baseline start none → 2022-11-04; baseline finish none → 2022-11-07 |
| 31 | **Admin** | 2022-10-26 → 2022-11-11 A (+16d) | 2022-11-07 → 2022-12-07 (+30d) | 8.5d → 18.25d | 0% → 8% |  |  | baseline start none → 2022-11-09; baseline finish none → 2022-12-02 |
| 32 | Allow tracking of chat messages | 2022-10-26 → 2022-11-28 (+33d) | 2022-10-27 → 2022-11-30 (+34d) |  |  | none → 5.25d |  | baseline start none → 2022-11-18; baseline finish none → 2022-11-21 |
| 33 | Allow tracking of reviews | 2022-10-28 → 2022-11-29 (+32d) | 2022-11-07 → 2022-12-07 (+30d) |  |  | 4.5d → 0d |  | constraint start no earlier than 2022-10-26 → none; baseline start none → 2022-11-24; baseline finish none → 2022-12-02 |
| 34 | Allow tracking of feedbacks | 2022-10-28 → 2022-11-21 (+24d) | 2022-11-01 → 2022-11-25 (+24d) |  |  | 8d → 7.5d |  | constraint start no earlier than 2022-10-26 → none; baseline start none → 2022-11-16; baseline finish none → 2022-11-22 |
| 35 | Allow manual user banning | 2022-10-28 → 2022-11-21 (+24d) | 2022-10-31 → 2022-11-22 (+22d) |  |  | 9.5d → 11d |  | constraint start no earlier than 2022-10-26 → none; baseline start none → 2022-11-14; baseline finish none → 2022-11-16 |
| 36 | Allow to approve/deny teachers' profiles | 2022-10-27 → 2022-11-11 A (+15d) | 2022-10-27 → 2022-11-11 A (+15d) |  | 0% → 100% | 11.25d → none |  | constraint start no earlier than 2022-10-26 → none; baseline start none → 2022-11-09; baseline finish none → 2022-11-09 |
| 37 | **Testing** | 2022-10-26 → 2022-12-07 (+42d) | 2022-11-01 → 2022-12-14 (+43d) |  |  | none → 0d |  | baseline start none → 2022-12-02; baseline finish none → 2022-12-09 |
| 38 | User testing | 2022-11-14 → 2022-12-07 (+23d) | 2022-11-16 → 2022-12-12 (+26d) |  |  |  |  | constraint start no earlier than 2022-10-26 → none; baseline start none → 2022-12-02; baseline finish none → 2022-12-07 |
| 39 | Smoke testing | 2022-11-14 → 2022-12-07 (+23d) | 2022-11-14 → 2022-12-08 (+24d) |  |  |  |  | constraint start no earlier than 2022-10-26 → none; baseline start none → 2022-12-02; baseline finish none → 2022-12-05 |
| 40 | System testing | 2022-11-14 → 2022-12-07 (+23d) | 2022-11-18 → 2022-12-14 (+26d) |  |  |  |  | constraint start no earlier than 2022-10-26 → none; baseline start none → 2022-12-02; baseline finish none → 2022-12-09 |
| 41 | Stress test | 2022-11-14 → 2022-12-07 (+23d) | 2022-11-16 → 2022-12-12 (+26d) |  |  |  |  | constraint start no earlier than 2022-10-26 → none; baseline start none → 2022-12-02; baseline finish none → 2022-12-07 |
